# FMPS Demo

How a schedule from a web Gantt chart changed from version to version. A marks actual dates.

## Version 1 (saved 2025-11-10)

| ID | WBS | Task | Duration | Start | Finish | Predecessors |
| --- | --- | --- | --- | --- | --- | --- |
| 2 |  | Architect Design | 12d | 2025-10-27 | 2025-11-11 |  |
| 3 |  | Hardware architect design | 7d | 2025-11-06 | 2025-11-14 |  |
| 4 |  | Demo Show | 2d | 2026-01-26 | 2026-01-27 |  |
| 5 | 4 | **Electric Design** | 35d | 2025-11-17 | 2026-01-02 | 3 |
| 6 |  | Schematic Design | 15d | 2025-11-17 | 2025-12-05 |  |
| 7 |  | Material Prepare | 25d | 2025-11-17 | 2025-12-19 |  |
| 8 |  | Layout | 5d | 2025-12-08 | 2025-12-12 | 6 |
| 9 |  | PCBA Build | 15d | 2025-12-15 | 2026-01-02 | 8 |
| 10 | 5 | **Mechanical Design** | 35d | 2025-11-17 | 2026-01-02 | 3 |
| 11 |  | ID | 10d | 2025-11-17 | 2025-11-28 |  |
| 12 |  | 3D Draw | 15d | 2025-12-01 | 2025-12-19 | 11 |
| 13 |  | 3D Print Prototype | 10d | 2025-12-22 | 2026-01-02 | 12 |
| 14 | 6 | **Firmware Design** | 53d | 2025-11-12 | 2026-01-23 | 2 |
| 15 | 6.1 | **FSK Generate & Sample Verification** | 20d | 2025-11-12 | 2025-12-09 |  |
| 16 |  | FSK generate & cop to power line | 10d | 2025-11-12 | 2025-11-25 |  |
| 17 |  | FSK signal sampling | 10d | 2025-11-26 | 2025-12-09 | 16 |
| 18 |  | RCD Protect | 5d | 2025-12-10 | 2025-12-16 | 15 |
| 19 |  | Fault Detection | 15d | 2025-12-17 | 2026-01-06 | 18 |
| 20 |  | Integration Develop & Test | 13d | 2026-01-07 | 2026-01-23 | 19 |
| 21 |  | Technology Evaluation | 15d | 2025-10-27 | 2025-11-14 |  |

## Version 2 (saved 2025-11-10)

Last finish stays 2026-01-27.

Added:

| ID | Task | Duration | Start | Finish | Predecessors |
| --- | --- | --- | --- | --- | --- |
| 4 | Power Unit Evaluate | 7d | 2025-11-10 | 2025-11-18 |  |
| 5 | Signal Amp & Isolation | 8d | 2025-11-19 | 2025-11-28 |  |
| 6 | Protect & Main Switch Design | 8d | 2025-11-19 | 2025-11-28 |  |
| 7 | **PLC Driver evaluate Ti AFE032** | 20d | 2025-11-10 | 2025-12-05 |  |
| 8 | Material purchuse | 8d | 2025-11-10 | 2025-11-19 |  |
| 9 | JLC PCB&PCBA Sample | 10d | 2025-11-13 | 2025-11-26 |  |
| 10 | Signal generate & sample | 7d | 2025-11-27 | 2025-12-05 | 9 |

Removed: 21 Technology Evaluation

## Version 3 (saved 2025-11-17)

Last finish stays 2026-01-27.

Added:

| ID | Task | Duration | Start | Finish | Predecessors |
| --- | --- | --- | --- | --- | --- |
| 21 | **OOK Generate & Sample Verification** | 14d | 2025-11-12 | 2025-12-01 |  |
| 22 | OOK generate & cop to power line | 10d | 2025-11-12 | 2025-11-25 |  |
| 23 | OOK signal sampling | 4d | 2025-11-26 | 2025-12-01 | 22 |

Removed: 21 FSK Generate & Sample Verification; 22 FSK generate & cop to power line; 23 FSK signal sampling

Changed:

| ID | Task | Start | Finish | Duration | Predecessors |
| --- | --- | --- | --- | --- | --- |
| 11 | **Electric Design** |  | 2026-01-02 → 2025-12-31 (-2d) | 35d → 33d |  |
| 12 | Schematic Design |  | 2025-12-05 → 2025-11-28 (-7d) | 15d → 10d |  |
| 13 | Material Prepare | 2025-11-17 → 2025-11-24 (+7d) |  | 25d → 20d |  |
| 14 | Layout | 2025-12-08 → 2025-12-01 (-7d) | 2025-12-12 → 2025-12-10 (-2d) | 5d → 8d |  |
| 15 | PCBA Build | 2025-12-15 → 2025-12-11 (-4d) | 2026-01-02 → 2025-12-31 (-2d) |  |  |
| 16 | **Mechanical Design** | 2025-11-17 → 2025-11-24 (+7d) |  | 35d → 30d | 3 → none |
| 17 | ID | 2025-11-17 → 2025-11-24 (+7d) |  | 10d → 5d |  |
| 20 | **Firmware Design** |  | 2026-01-23 → 2026-01-15 (-8d) | 53d → 47d |  |
| 24 | RCD Protect | 2025-12-10 → 2025-12-02 (-8d) | 2025-12-16 → 2025-12-08 (-8d) |  | FSK Generate & Sample Verification → 21 |
| 25 | Fault Detection | 2025-12-17 → 2025-12-09 (-8d) | 2026-01-06 → 2025-12-29 (-8d) |  |  |
| 26 | Integration Develop & Test | 2026-01-07 → 2025-12-30 (-8d) | 2026-01-23 → 2026-01-15 (-8d) |  |  |
